# pz1_ITmanagement

How a schedule from MS Project changed from version to version. A marks actual dates.

## Version 1 (saved 2025-11-19, file процент.mpp)

Note of the change: last

| ID | WBS | Task | Duration | Start | Finish | Predecessors | Complete | Total float | Constraint |
| --- | --- | --- | --- | --- | --- | --- | --- | --- | --- |
| 1 |  | Начало проекта | 0d | 2025-09-24 | 2025-09-24 |  |  | 297.03d |  |
| 2 | 2 | **Утверждение проектов** | 101d | 2025-09-24 A | 2026-02-11 |  | 40% | 0d |  |
| 3 |  | Начало утверждения проектов | 1d | 2025-09-24 A | 2025-09-24 A | 1 | 100% |  |  |
| 4 |  | Утверждение проекта на строительство | 90d | 2025-09-25 A | 2026-01-28 | 3 | 40% | 10d |  |
| 5 |  | Утверждение проекта на газ | 100d | 2025-09-25 A | 2026-02-11 | 3 | 25% | 0d |  |
| 6 |  | Утверждение проекта на водопровод и канализацию | 60d | 2025-09-25 A | 2025-12-17 | 3 | 80% | 40d |  |
| 7 |  | Утверждение проекта на отопление | 90d | 2025-09-25 A | 2026-01-28 | 3 | 30% | 10d |  |
| 8 |  | Проекты утверждены | 0d | 2026-02-11 | 2026-02-11 | 4, 5, 6, 7 |  | 0d |  |
| 9 | 3 | **Строительство фундамента** | 38.67d | 2026-02-12 | 2026-04-07 |  |  | 0d |  |
| 10 |  | Начало закладки фундамента | 2d | 2026-02-12 | 2026-02-13 | 8 |  | 0d |  |
| 11 |  | Рытье траншей | 1.67d | 2026-02-16 | 2026-02-17 | 10 |  | 0d |  |
| 12 |  | Заливка фундамента | 5d | 2026-02-17 | 2026-02-24 | 11 |  | 0d |  |
| 13 |  | Фундамент завершен | 0d | 2026-04-07 | 2026-04-07 | 12FS+30d |  | 0d |  |
| 14 | 4 | **Каркас и крыша** | 111.36d | 2026-04-07 | 2026-09-10 |  |  | 0d |  |
| 15 |  | Начало каркаса | 1d | 2026-04-07 | 2026-04-08 | 13 |  | 0d |  |
| 16 |  | Кладка стен | 60.36d | 2026-04-08 | 2026-07-02 | 15 |  | 0d |  |
| 17 |  | Перекрытие стен | 15d | 2026-07-02 | 2026-07-23 | 16 |  | 0d |  |
| 18 |  | Установка крыши | 30d | 2026-07-23 | 2026-09-03 | 17 |  | 5d |  |
| 19 |  | Установка наружных дверей и окон | 7.07d | 2026-07-23 | 2026-08-03 | 17 |  | 27.93d |  |
| 20 |  | Установка полов | 5d | 2026-09-03 | 2026-09-10 | 17 |  | 0d |  |
| 21 |  | Каркас готов | 0d | 2026-09-10 | 2026-09-10 | 18, 19, 20 |  | 0d |  |
| 22 | 5 | **Коммуникации** | 11d | 2026-09-10 | 2026-09-25 |  |  | 0d |  |
| 23 |  | Начало установки коммуникаций | 1d | 2026-09-10 | 2026-09-11 | 21 |  | 0d |  |
| 24 |  | Проведение и подключение водопровода и канализации | 10d | 2026-09-11 | 2026-09-25 | 23 |  | 0d |  |
| 25 |  | Установка и подключение электропроводки | 5d | 2026-09-11 | 2026-09-18 | 23 |  | 5d |  |
| 26 |  | Установка и подключение газовых коммуникаций | 5d | 2026-09-11 | 2026-09-18 | 23 |  | 5d |  |
| 27 |  | Коммуникации готовы | 0d | 2026-09-25 | 2026-09-25 | 24, 25, 26 |  | 0d |  |
| 28 | 6 | **Внутренняя отделка** | 35d | 2026-09-25 | 2026-11-13 |  |  | 0d |  |
| 29 |  | Начало отделки | 0d | 2026-09-25 | 2026-09-25 | 27 |  | 0d |  |
| 30 |  | Внутренние двери | 10d | 2026-09-25 | 2026-10-09 | 29 |  | 0d |  |
| 31 |  | Навесные потолки | 5d | 2026-10-09 | 2026-10-16 | 30 |  | 0d |  |
| 32 |  | Отделка стен | 3d | 2026-10-20 | 2026-10-23 | 30 |  | 0d | as late as possible |
| 33 |  | Монтаж отопления | 5d | 2026-10-09 | 2026-10-16 | 30 |  | 0d |  |
| 34 |  | Установка оборудования, приборов, сантехники | 5d | 2026-10-16 | 2026-10-23 | 31, 33 |  | 0d |  |
| 35 |  | Настил полов | 15d | 2026-10-23 | 2026-11-13 | 32, 34 |  | 0d |  |
| 36 |  | Конец отделки | 0d | 2026-11-13 | 2026-11-13 | 35 |  | 0d |  |
| 37 |  | Конец проекта | 0d | 2026-11-13 | 2026-11-13 | 36 |  | 0d |  |

## Version 2 (saved 2025-11-19, file факт.mpp)

Last finish stays 2026-11-13. Complete tasks 1 → 0.

Changed:

| ID | Task | Start | Finish | Complete | Total float | Other |
| --- | --- | --- | --- | --- | --- | --- |
| 2 | **Утверждение проектов** | 2025-09-24 A → 2025-09-24 |  | 40% → 0% | 0d → 0.61d |  |
| 3 | Начало утверждения проектов | 2025-09-24 A → 2025-09-24 | 2025-09-24 A → 2025-09-24 | 100% → 0% | none → 0.61d |  |
| 4 | Утверждение проекта на строительство | 2025-09-25 A → 2025-09-25 |  | 40% → 0% |  |  |
| 5 | Утверждение проекта на газ | 2025-09-25 A → 2025-09-25 |  | 25% → 0% | 0d → 0.61d |  |
| 6 | Утверждение проекта на водопровод и канализацию | 2025-09-25 A → 2025-09-25 |  | 80% → 0% |  |  |
| 7 | Утверждение проекта на отопление | 2025-09-25 A → 2025-09-25 |  | 30% → 0% |  |  |
| 9 | **Строительство фундамента** | 2026-02-12 A |  | 0% → 7% |  |  |
| 11 | Рытье траншей | 2026-02-16 A |  | 0% → 20% | 0d → 0.28d | resources Рабочий1; Рабочий2; Рабочий3; Подсобник1; Подсобник2; Трактор → Рабочий1 [105%]; Рабочий2 [105%]; Рабочий3 [105%]; Подсобник1 [105%]; Подсобник2 [105%]; Трактор [105%] |
| 12 | Заливка фундамента | 2026-02-17 A |  | 0% → 6% |  |  |

## Version 3 (saved 2025-11-19, file ресурсы.mpp)

Last finish stays 2026-11-13.

Changed:

| ID | Task | Start | Complete | Total float | Other |
| --- | --- | --- | --- | --- | --- |
| 9 | **Строительство фундамента** | 2026-02-12 A → 2026-02-12 | 7% → 0% |  |  |
| 11 | Рытье траншей | 2026-02-16 A → 2026-02-16 | 20% → 0% | 0.28d → 0d | resources Рабочий1 [105%]; Рабочий2 [105%]; Рабочий3 [105%]; Подсобник1 [105%]; Подсобник2 [105%]; Трактор [105%] → Рабочий1; Рабочий2; Рабочий3; Подсобник1; Подсобник2; Трактор |
| 12 | Заливка фундамента | 2026-02-17 A → 2026-02-17 | 6% → 0% |  |  |

## Version 4 (saved 2025-11-19, file задачи.mpp)

Note of the change: last

Last finish stays 2026-11-13.

Changed:

| ID | Task | Duration | Other |
| --- | --- | --- | --- |
| 16 | Кладка стен | 60.36d → 58.36d | resources Рабочий1; Рабочий2; Рабочий3; Подсобник1; Подсобник2; Песок [6 t]; Цемент [2 t]; Доставка [5.2%]; Кирпич [70000 psc] → Рабочий1; Рабочий2; Рабочий3; Подсобник1; Подсобник2; Песок [5.8 t]; Цемент [1.93 t]; Доставка [5.2%]; Кирпич [67680.6 psc] |
